# beehAIve Project - SR01

How a schedule from MS Project changed from version to version. A marks actual dates.

## Version 1 (data date 2023-12-06, saved 2024-01-23, file 2023_C10_beehAIve Project_SR01_beehAIve_v1.0.mpp)

Note of the change: Added management docs

| ID | WBS | Task | Duration | Start | Finish | Predecessors | Complete | Total float | Constraint |
| --- | --- | --- | --- | --- | --- | --- | --- | --- | --- |
| 1 | 1 | **beehAIve** | 127d | 2023-10-16 A | 2024-03-22 |  | 41% | 0d |  |
| 2 | 1.1 | **WebApp** | 76d | 2023-10-16 A | 2024-01-24 |  | 57% | 51d |  |
| 3 | 1.1.1 | **RAD** | 12d | 2023-11-13 A | 2023-11-25 A |  | 100% |  |  |
| 4 |  | Introduction | 6d | 2023-11-13 A | 2023-11-18 A |  | 100% |  | start no earlier than 2023-11-13 |
| 5 | 1.1.1.2 | **System Model** | 2d | 2023-11-14 A | 2023-11-15 A |  | 100% |  |  |
| 6 |  | Scenarios | 1d | 2023-11-14 A | 2023-11-14 A | 9 | 100% |  |  |
| 7 |  | Use Cases | 1d | 2023-11-15 A | 2023-11-15 A | 6 | 100% |  |  |
| 8 |  | Current System | 6d | 2023-11-13 A | 2023-11-18 A |  | 100% |  | start no earlier than 2023-11-13 |
| 9 |  | Proposed System's Overview | 1d | 2023-11-13 A | 2023-11-13 A |  | 100% |  | start no earlier than 2023-11-13 |
| 10 |  | Identify Functional Requirements | 1d | 2023-11-16 A | 2023-11-16 A | 5 | 100% |  |  |
| 11 |  | Write Functional Requirements | 1d | 2023-11-17 A | 2023-11-17 A | 10 | 100% |  |  |
| 12 |  | Identify Non Functional Requirements | 1d | 2023-11-16 A | 2023-11-16 A | 5 | 100% |  |  |
| 13 |  | Write Non Functional Requirements | 1d | 2023-11-17 A | 2023-11-17 A | 12 | 100% |  |  |
| 14 |  | Identify Actors | 1d | 2023-11-16 A | 2023-11-16 A | 5 | 100% |  |  |
| 15 |  | User Stories | 1d | 2023-11-18 A | 2023-11-18 A | 11, 13 | 100% |  |  |
| 16 |  | Use Case Diagram | 2d | 2023-11-17 A | 2023-11-18 A | 14 | 100% |  |  |
| 17 | 1.1.1.12 | **Object Model** | 2d | 2023-11-20 A | 2023-11-21 A | 11FS+1d, 13 | 100% |  |  |
| 18 |  | Class Diagram | 2d | 2023-11-20 A | 2023-11-21 A |  | 100% |  |  |
| 19 |  | Object Table | 2d | 2023-11-20 A | 2023-11-21 A |  | 100% |  |  |
| 20 | 1.1.1.13 | **Dynamic Model** | 4d | 2023-11-22 A | 2023-11-25 A | 17 | 100% |  |  |
| 21 |  | Statechart Diagrams | 4d | 2023-11-22 A | 2023-11-25 A |  | 100% |  |  |
| 22 | 1.1.1.13.2 | **Sequence Diagrams** | 4d | 2023-11-22 A | 2023-11-25 A |  | 100% |  |  |
| 23 |  | Sequence Diagram UC_CA | 4d | 2023-11-22 A | 2023-11-25 A |  | 100% |  |  |
| 24 |  | Sequence Diagram UC_NA | 4d | 2023-11-22 A | 2023-11-25 A |  | 100% |  |  |
| 25 |  | Sequence Diagram UC_PI | 4d | 2023-11-22 A | 2023-11-25 A |  | 100% |  |  |
| 26 | 1.1.1.14 | **User Interface** | 1d | 2023-11-22 A | 2023-11-22 A | 17 | 100% |  |  |
| 27 |  | Mock-ups | 1d | 2023-11-22 A | 2023-11-22 A |  | 100% |  |  |
| 28 |  | Navigational Path | 1d | 2023-11-22 A | 2023-11-22 A |  | 100% |  |  |
| 29 |  | RAD Integration | 1d | 2023-11-23 A | 2023-11-23 A | 28 | 100% |  |  |
| 30 |  | Glossary | 1d | 2023-11-23 A | 2023-11-23 A | 28 | 100% |  |  |
| 31 | 1.1.2 | **SDD** | 7d | 2023-11-27 A | 2023-12-04 A | 3 | 100% |  |  |
| 32 |  | Introduction | 1d | 2023-11-27 A | 2023-11-27 A |  | 100% |  | start no earlier than 2023-11-27 |
| 33 |  | Current Software Architecture | 1d | 2023-11-28 A | 2023-11-28 A | 32 | 100% |  | start no earlier than 2023-11-28 |
| 34 | 1.1.2.3 | **Proposed Software Architecture** | 2d | 2023-11-29 A | 2023-11-30 A | 33 | 100% |  |  |
| 35 |  | Overview | 1d | 2023-11-29 A | 2023-11-29 A |  | 100% |  | start no earlier than 2023-11-29 |
| 36 |  | Subsytems Decomposition | 1d | 2023-11-29 A | 2023-11-29 A |  | 100% |  | start no earlier than 2023-11-29 |
| 37 |  | HW/SW Mapping and Deployment Diagram | 1d | 2023-11-30 A | 2023-11-30 A | 36 | 100% |  |  |
| 38 | 1.1.2.4 | **Persistent Data Management** | 4d | 2023-11-27 A | 2023-11-30 A |  | 100% |  |  |
| 39 |  | ER Schema | 2d | 2023-11-27 A | 2023-11-28 A |  | 100% |  | start no earlier than 2023-11-27 |
| 40 |  | Logical Schema | 1d | 2023-11-29 A | 2023-11-29 A | 39 | 100% |  |  |
| 41 |  | Data Dictionary | 1d | 2023-11-30 A | 2023-11-30 A | 40 | 100% |  |  |
| 42 |  | Access Control & Global Control Flow | 1d | 2023-12-02 A | 2023-12-02 A | 44 | 100% |  |  |
| 43 |  | Boundary Conditions | 1d | 2023-12-02 A | 2023-12-02 A |  | 100% |  | start no earlier than 2023-12-02 |
| 44 | 1.1.2.7 | **Subsystems Services** | 1d | 2023-12-01 A | 2023-12-01 A | 34 | 100% |  |  |
| 45 |  | GestioneUtente | 1d | 2023-12-01 A | 2023-12-01 A |  | 100% |  | start no earlier than 2023-12-01 |
| 46 |  | GestioneArnia | 1d | 2023-12-01 A | 2023-12-01 A |  | 100% |  | start no earlier than 2023-12-01 |
| 47 |  | GestioneSensori | 1d | 2023-12-01 A | 2023-12-01 A |  | 100% |  | start no earlier than 2023-12-01 |
| 48 |  | PrevisioneAnomalie | 1d | 2023-12-01 A | 2023-12-01 A |  | 100% |  | start no earlier than 2023-12-01 |
| 49 |  | Glossary | 1d | 2023-12-02 A | 2023-12-02 A | 44 | 100% |  | start no earlier than 2023-12-02 |
| 50 |  | SDD Revision | 1d | 2023-12-04 A | 2023-12-04 A | 49 | 100% |  |  |
| 51 | 1.1.3 | **ODD** | 7d | 2023-12-18 | 2023-12-27 | 64 |  | 1d |  |
| 52 |  | Introduction | 1d | 2023-12-18 | 2023-12-18 |  |  | 1d | start no earlier than 2023-12-18 |
| 53 |  | Packages | 1d | 2023-12-19 | 2023-12-19 | 52 |  | 1d | start no earlier than 2023-12-19 |
| 54 |  | Class Interfaces | 1d | 2023-12-20 | 2023-12-20 | 53 |  | 1d | start no earlier than 2023-12-20 |
| 55 |  | Class Diagram | 1d | 2023-12-21 | 2023-12-21 | 54 |  | 1d | start no earlier than 2023-12-21 |
| 56 |  | Design Patterns | 2d | 2023-12-22 | 2023-12-23 | 55 |  | 1d | start no earlier than 2023-12-22 |
| 57 |  | Glossary | 1d | 2023-12-27 | 2023-12-27 | 56 |  | 1d | start no earlier than 2023-12-23 |
| 58 |  | Test Plan | 2d | 2023-12-05 A | 2023-12-06 A | 31 | 100% |  | finish no earlier than 2023-12-06 |
| 59 |  | Test Case Specification | 2d | 2023-12-07 | 2023-12-08 | 58 |  | 4d |  |
| 60 | 1.1.6 | **Testing Documentation** | 1d | 2024-01-20 | 2024-01-20 | 68 |  | 1d |  |
| 61 |  | Test Incident Report | 1d | 2024-01-20 | 2024-01-20 |  |  | 1d | start no earlier than 2024-01-18 |
| 62 |  | Test Summary Report | 1d | 2024-01-20 | 2024-01-20 |  |  | 1d |  |
| 63 |  | Test Incident Report Table | 1d | 2024-01-20 | 2024-01-20 |  |  | 1d |  |
| 64 |  | Midterm Delivery | 1d | 2023-12-13 | 2023-12-13 | 59FS+3d |  |  |  |
| 65 | 1.1.8 | **Development** | 13d | 2023-12-28 | 2024-01-12 | 51 |  | 1d |  |
| 66 |  | Back-end | 13d | 2023-12-28 | 2024-01-12 |  |  | 1d |  |
| 67 |  | Front-end | 13d | 2023-12-28 | 2024-01-12 |  |  | 1d |  |
| 68 | 1.1.9 | **Testing** | 6d | 2024-01-13 | 2024-01-19 | 65 |  | 1d |  |
| 69 |  | Unit Testing | 4d | 2024-01-13 | 2024-01-17 |  |  | 1d | start no earlier than 2024-01-13 |
| 70 |  | System Testing | 2d | 2024-01-18 | 2024-01-19 | 69 |  | 1d |  |

| ID | WBS | Task | Duration | Start | Finish | Predecessors | Complete | Total float | Constraint |
| --- | --- | --- | --- | --- | --- | --- | --- | --- | --- |
| 71 | 1.1.10 | **Manuals** | 1d | 2024-01-20 | 2024-01-20 | 68 |  | 53d |  |
| 72 |  | User Manual | 1d | 2024-01-20 | 2024-01-20 |  |  | 53d | start no earlier than 2024-01-18 |
| 73 |  | Installation Manual | 1d | 2024-01-20 | 2024-01-20 |  |  | 53d | start no earlier than 2024-01-18 |
| 74 |  | First Release | 0d | 2024-01-24 | 2024-01-24 | 90 |  |  |  |
| 75 | 1.1.12 | **Weekly Meeting** | 47.12d | 2023-10-16 A | 2023-12-18 |  | 80% | 79.88d |  |
| 76 |  | Weekly Meeting 1 | 1h | 2023-10-16 A | 2023-10-16 A |  | 100% |  | start no earlier than 2023-10-16 |
| 77 |  | Weekly Meeting 2 | 1h | 2023-10-16 A | 2023-10-16 A |  | 100% |  | start no earlier than 2023-10-16 |
| 78 |  | Weekly Meeting 3 | 1h | 2023-10-23 A | 2023-10-23 A |  | 100% |  | start no earlier than 2023-10-23 |
| 79 |  | Weekly Meeting 4 | 1h | 2023-10-30 A | 2023-10-30 A |  | 100% |  | start no earlier than 2023-10-30 |
| 80 |  | Weekly Meeting 5 | 1h | 2023-11-13 A | 2023-11-13 A |  | 100% |  | start no earlier than 2023-11-13 |
| 81 |  | Weekly Meeting 6 | 1h | 2023-11-20 A | 2023-11-20 A |  | 100% |  | start no earlier than 2023-11-20 |
| 82 |  | Weekly Meeting 7 | 1h | 2023-11-27 A | 2023-11-27 A |  | 100% |  | start no earlier than 2023-11-27 |
| 83 |  | Weekly Meeting 8 | 1h | 2023-12-04 A | 2023-12-04 A |  | 100% |  | start no earlier than 2023-12-04 |
| 84 |  | Weekly Meeting 9 | 1h | 2023-12-11 | 2023-12-11 |  |  | 85.88d | start no earlier than 2023-12-11 |
| 85 |  | Weekly Meeting 10 | 1h | 2023-12-18 | 2023-12-18 |  |  | 79.88d | start no earlier than 2023-12-18 |
| 86 |  | Security Review - RAD | 1d | 2023-11-27 A | 2023-11-27 A | 3 | 100% |  | start no earlier than 2023-11-27 |
| 87 |  | Security Review - SDD | 1d | 2023-12-05 A | 2023-12-05 A | 31 | 100% |  | start no earlier than 2023-12-05 |
| 88 |  | Security Review - ODD | 1d | 2023-12-28 | 2023-12-28 | 51 |  | 72d | start no earlier than 2023-12-28 |
| 89 |  | Security Check - Post-Testing | 1d | 2024-01-20 | 2024-01-20 | 68 |  | 53d |  |
| 90 |  | Security Audit - Pre-Release | 2d | 2024-01-22 | 2024-01-23 | 60 |  | 1d | start no earlier than 2024-01-22 |
| 91 | 1.2 | **Mobile App** | 50d | 2024-01-25 | 2024-03-22 | 74 |  | 0d |  |
| 92 |  | Planning & Design | 10d | 2024-01-25 | 2024-02-05 |  |  | 0d | start no earlier than 2024-01-25 |
| 93 |  | Prototype Development | 15d | 2024-02-06 | 2024-02-22 | 92 |  | 0d |  |
| 94 |  | Testing & Feedback | 15d | 2024-02-23 | 2024-03-11 | 93 |  | 0d |  |
| 95 |  | Development Iterations | 10d | 2024-03-12 | 2024-03-22 | 94 |  | 0d |  |
| 96 |  | Mobile App Release | 0d | 2024-03-22 | 2024-03-22 | 95 |  | 0d |  |

## Version 2 (data date 2023-12-19, saved 2024-01-23, file 2023_C10_beehAIve Project_SR02_beehAIve_v1.0.mpp)

Note of the change: Added management docs

Last finish stays 2024-03-22. Complete tasks 49 → 53.

Changed:

| ID | Task | Start | Finish | Complete | Total float |
| --- | --- | --- | --- | --- | --- |
| 1 | **beehAIve** |  |  | 41% → 42% |  |
| 2 | **WebApp** |  |  | 57% → 60% |  |
| 59 | Test Case Specification | 2023-12-07 A | 2023-12-08 A | 0% → 100% | 4d → none |
| 64 | Midterm Delivery | 2023-12-13 A | 2023-12-13 A | 0% → 100% |  |
| 75 | **Weekly Meeting** |  | 2023-12-18 A | 80% → 100% | 79.88d → none |
| 84 | Weekly Meeting 9 | 2023-12-11 A | 2023-12-11 A | 0% → 100% | 85.88d → none |
| 85 | Weekly Meeting 10 | 2023-12-18 A | 2023-12-18 A | 0% → 100% | 79.88d → none |

## Version 3 (data date 2024-01-03, saved 2024-01-23, file 2023_C10_beehAIve Project_SR03_beehAIve_v1.0.mpp)

Note of the change: Added management docs

Last finish stays 2024-03-22. Complete tasks 53 → 60.

Changed:

| ID | Task | Start | Finish | Complete | Total float | Other |
| --- | --- | --- | --- | --- | --- | --- |
| 1 | **beehAIve** |  |  | 42% → 50% |  |  |
| 2 | **WebApp** |  |  | 60% → 70% |  |  |
| 51 | **ODD** | 2023-12-18 A | 2023-12-27 A | 0% → 100% | 1d → none |  |
| 52 | Introduction | 2023-12-18 A | 2023-12-18 A | 0% → 100% | 1d → none |  |
| 53 | Packages | 2023-12-19 A | 2023-12-19 A | 0% → 100% | 1d → none |  |
| 54 | Class Interfaces | 2023-12-20 A | 2023-12-20 A | 0% → 100% | 1d → none |  |
| 55 | Class Diagram | 2023-12-21 A | 2023-12-21 A | 0% → 100% | 1d → none | resources Francesco Festa [31.2%]; Sara Valente [31.2%] → Francesco Festa [12%]; Sara Valente [12%]; Lorenzo Milione [38.5%] |
| 56 | Design Patterns | 2023-12-22 A | 2023-12-23 A | 0% → 100% | 1d → none |  |
| 57 | Glossary | 2023-12-27 A | 2023-12-27 A | 0% → 100% | 1d → none |  |
| 65 | **Development** | 2023-12-28 A |  | 0% → 16% | 1d → 0d |  |
| 66 | Back-end | 2023-12-28 A |  | 0% → 16% | 1d → 0d |  |
| 67 | Front-end | 2023-12-28 A |  | 0% → 16% | 1d → 0d |  |
| 88 | Security Review - ODD | 2023-12-28 A | 2023-12-28 A | 0% → 100% | 72d → none |  |

## Version 4 (data date 2024-01-24, saved 2024-01-23, file 2023_C10_beehAIve Project_Complete_beehAIve_v1.0.mpp)

Note of the change: Added management docs

Last finish stays 2024-03-22. Complete tasks 60 → 72.

Changed:

| ID | Task | Start | Finish | Complete | Total float |
| --- | --- | --- | --- | --- | --- |
| 1 | **beehAIve** |  |  | 50% → 71% |  |
| 2 | **WebApp** |  | 2024-01-24 A | 70% → 100% | 51d → none |
| 60 | **Testing Documentation** | 2024-01-20 A | 2024-01-20 A | 0% → 100% | 1d → none |
| 61 | Test Incident Report | 2024-01-20 A | 2024-01-20 A | 0% → 100% | 1d → none |
| 62 | Test Summary Report | 2024-01-20 A | 2024-01-20 A | 0% → 100% | 1d → none |
| 63 | Test Incident Report Table | 2024-01-20 A | 2024-01-20 A | 0% → 100% | 1d → none |
| 65 | **Development** |  | 2024-01-12 A | 16% → 100% | 0d → none |
| 66 | Back-end |  | 2024-01-12 A | 16% → 100% | 0d → none |
| 67 | Front-end |  | 2024-01-12 A | 16% → 100% | 0d → none |
| 68 | **Testing** | 2024-01-13 A | 2024-01-19 A | 0% → 100% | 1d → none |
| 69 | Unit Testing | 2024-01-13 A | 2024-01-17 A | 0% → 100% | 1d → none |
| 70 | System Testing | 2024-01-18 A | 2024-01-19 A | 0% → 100% | 1d → none |
| 71 | **Manuals** | 2024-01-20 A | 2024-01-20 A | 0% → 100% | 53d → none |
| 72 | User Manual | 2024-01-20 A | 2024-01-20 A | 0% → 100% | 53d → none |
| 73 | Installation Manual | 2024-01-20 A | 2024-01-20 A | 0% → 100% | 53d → none |
| 74 | First Release | 2024-01-24 A | 2024-01-24 A | 0% → 100% |  |
| 89 | Security Check - Post-Testing | 2024-01-20 A | 2024-01-20 A | 0% → 100% | 53d → none |
| 90 | Security Audit - Pre-Release | 2024-01-22 A | 2024-01-23 A | 0% → 100% | 1d → none |
